# ABP Planificacion

Schedule from MS Project, 2018-09-10 to 2019-05-06.

## Calendars

- Estándar: Mon-Fri 09:00-13:00, 15:00-19:00; Sat-Sun off.

## Resources

| Resource | Rate | Cost per use |
| --- | --- | --- |
| Débora Galdeano González | 18 | 18 |
| Marines Ánton Castelló | 18 | 18 |
| María Sánchez Marqués | 18 | 18 |
| Jose Ramon Barea Cecilia | 18 | 18 |
| David Ramón Sevilla | 18 | 18 |
| Jose Vicente Anton Coy | 18 | 18 |
| Jesus Valiente | 18 | 18 |

## Schedule

| ID | WBS | Task | Type | Duration | Start | Finish | Total slack | Constraint |
| --- | --- | --- | --- | --- | --- | --- | --- | --- |
| 1 | 1 | **Hito 0** |  | 22.2d | 2018-09-10 | 2018-10-10 | 148.8d |  |
| 2 | 1.1 | **Iteracion 1** |  | 16.2d | 2018-09-10 | 2018-10-02 | 154.8d |  |
| 3 | 1.1.1 | [PM]Rellenar documento de Concepto del proyecto |  | 9.6h | 2018-09-10 | 2018-09-11 | 169.8d | start no earlier than 2018-09-10 |
| 4 | 1.1.2 | [PM]Rellenar Version inicial del documento Especificacion |  | 9.6h | 2018-10-01 | 2018-10-02 | 154.8d |  |
| 5 | 1.2 | **Iteracion 2** |  | 7.2d | 2018-10-01 | 2018-10-10 | 148.8d |  |
| 6 | 1.2.1 | [PM]Completar y Revisar documento Especificacion |  | 9.6h | 2018-10-01 | 2018-10-02 | 154.8d |  |
| 7 | 1.2.2 | [PM]Crear WBS del proyecto project |  | 28.8h | 2018-10-01 | 2018-10-04 | 152.4d |  |
| 8 | 1.2.3 | [PM]Crear plan general (tareas y precedencias basicas) en project |  | 28.8h | 2018-10-01 | 2018-10-04 | 152.4d |  |
| 9 | 1.2.4 | [PM]Elaborar el Presupuesto(hoja de calculo) |  | 57.6h | 2018-10-01 | 2018-10-10 | 148.8d |  |
| 10 | 2 | **Hito 1** |  | 49d? | 2018-10-01 | 2018-12-06 | 0d |  |
| 11 | 2.1 | **Iteracion 3** |  | 1d | 2018-10-10 | 2018-10-10 | 0d |  |
| 12 | 2.1.1 | <Tarea nueva> | manual | 1d? | 2018-10-10 | 2018-10-10 |  |  |
| 13 | 2.2 | **Iteracion 4** |  | 1d | 2018-10-25 | 2018-10-25 | 0d |  |
| 14 | 2.2.1 | <Tarea nueva> | manual | 1d? | 2018-10-25 | 2018-10-25 |  |  |
| 15 | 2.3 | **Iteracion 5** |  | 1d | 2018-11-08 | 2018-11-08 | 0d |  |
| 16 | 2.3.1 | <Tarea nueva> | manual | 1d? | 2018-11-08 | 2018-11-08 |  |  |
| 17 | 2.4 | **Iteracion 6** |  | 1d | 2018-11-22 | 2018-11-22 | 0d |  |
| 18 | 2.4.1 | <Tarea nueva> | manual | 1d? | 2018-11-22 | 2018-11-22 |  |  |
| 19 | 2.5 | **Iteracion 7** |  | 1d | 2018-12-06 | 2018-12-06 | 0d |  |
| 20 | 2.5.1 | <Tarea nueva> | manual | 1d? | 2018-12-06 | 2018-12-06 |  |  |
| 21 | 2.6 | [PM]Detallar plan iteraciones del mes de Noviembre. Creación Subtareas y precedencias en Project |  | 1d | 2018-10-01 | 2018-10-01 | 155d |  |
| 22 | 2.7 | [PM]Detallar plan iteraciones del mes de Noviembre. Asignar recursos a las tareas en Project |  | 1d? | 2018-10-01 | 2018-10-01 | 155d |  |
| 23 | 2.8 | [PM]Detallar plan iteraciones del mes de Diciembre. Creación Subtareas y precedencias en Project |  | 1d? | 2018-10-01 | 2018-10-01 | 155d |  |
| 24 | 2.9 | [PM]Detallar plan iteraciones del mes de Diciembre. Asignar recursos a las tareas en Project |  | 1d? | 2018-10-01 | 2018-10-01 | 155d |  |
| 25 | 2.10 | [PM]Rellenar documento Gestión de riesgos |  | 1d? | 2018-10-01 | 2018-10-01 | 155d |  |
| 26 | 2.11 | [PM]Registrar tiempos y % de realización de tareas en Project |  | 1d? | 2018-10-01 | 2018-10-01 | 155d |  |
| 27 | 2.12 | [PM]Comparar la planificación prevista y real en Project hito 1 |  | 1d? | 2018-10-01 | 2018-10-01 | 155d |  |
| 28 | 2.13 | [PM]Aplicar el modelo EVA en Project |  | 1d? | 2018-10-01 | 2018-10-01 | 155d |  |
| 29 | 2.14 | [PM]Confeccionar Informes de iteración e informe resumen de Hito 1 |  | 1d? | 2018-10-01 | 2018-10-01 | 155d |  |
| 30 | 2.15 | [PM]Elaborar la presentación del Hito 1 |  | 1d? | 2018-10-01 | 2018-10-01 | 155d |  |
| 31 | 2.16 | [PM]Exponer la presentación del Hito 1 |  | 1d? | 2018-10-01 | 2018-10-01 | 155d |  |
| 32 | 2.17 | [V1]Documento de diseño de mecánicas de los NPCs |  | 1d | 2018-10-01 | 2018-10-01 | 155d |  |
| 33 | 2.18 | [V1]Documento de diseño de toma de decisión: espacio y métodos |  | 1d? | 2018-10-01 | 2018-10-01 | 155d |  |
| 34 | 2.19 | [V1]Documento de diseño técnico del motor de IA |  | 1d? | 2018-10-01 | 2018-10-01 | 155d |  |
| 35 | 2.20 | [V1]Sistema de toma de decisión con Behaviour Trees |  | 1d? | 2018-10-01 | 2018-10-01 | 155d |  |
| 36 | 2.21 | [V1]Sistema de percepción sensorial (vista, oído, olfato, canales…) |  | 1d? | 2018-10-01 | 2018-10-01 | 155d |  |
| 37 | 2.22 | [V2]Diseño e implementación de la arquitectura basada en objetos (diagrama de clases e implementación) |  | 1d | 2018-10-01 | 2018-10-01 | 155d |  |
| 38 | 2.23 | [V2]Diseño e implementación de la arquitectura basada en componentes (diagrama de clases e implementación) |  | 1d | 2018-10-01 | 2018-10-01 | 155d |  |
| 39 | 2.24 | [V2]Control del player: movimiento y colisiones sin motor de físicas |  | 1d | 2018-10-01 | 2018-10-01 | 155d |  |
| 40 | 2.25 | [V2]Mecánicas básicas entidades sin IA |  | 1d | 2018-10-01 | 2018-10-01 | 155d |  |
| 41 | 2.26 | [V2]Mecánicas de acción |  | 1d | 2018-10-01 | 2018-10-01 | 155d |  |
| 42 | 2.27 | [V2]Mecánicas de rol |  | 1d | 2018-10-01 | 2018-10-01 | 155d |  |
| 43 | 2.28 | [V2]Creación de un cargador de niveles |  | 1d | 2018-10-01 | 2018-10-01 | 155d |  |
| 44 | 2.29 | [V2]Diseño y creación de niveles |  | 1d | 2018-10-01 | 2018-10-01 | 155d |  |
| 45 | 2.30 | [V2]Implementación de cámara de seguimiento |  | 1d | 2018-10-01 | 2018-10-01 | 155d |  |
| 46 | 2.31 | [PD]Vídeo con animación del logo de la empresa |  | 1d | 2018-10-01 | 2018-10-01 | 155d |  |
| 47 | 2.32 | [PD]Cartel juego/proyecto |  | 1d | 2018-10-01 | 2018-10-01 | 155d |  |
| 48 | 2.33 | [TDS]Síntesis |  | 1d | 2018-10-01 | 2018-10-01 | 155d |  |
| 49 | 2.34 | [TDS]Grabaciones propias |  | 1d | 2018-10-01 | 2018-10-01 | 155d |  |
| 50 | 2.35 | [TDS]Sonidos externos |  | 1d | 2018-10-01 | 2018-10-01 | 155d |  |
| 51 | 2.36 | [TDS]Música |  | 1d | 2018-10-01 | 2018-10-01 | 155d |  |
| 52 | 2.37 | [TDS]Cue Sheet |  | 1d | 2018-10-01 | 2018-10-01 | 155d |  |
| 53 | 2.38 | [TDS]Hoja de metadatos |  | 1d | 2018-10-01 | 2018-10-01 | 155d |  |
| 54 | 2.39 | [TDS]Integración del motor de audio en el juego con prueba de concepto |  | 1d | 2018-10-01 | 2018-10-01 | 155d |  |
| 55 | 2.40 | [RV]Boceto de los personajes |  | 1d | 2018-10-01 | 2018-10-01 | 155d |  |
| 56 | 2.41 | [RV]Bocetos de los elementos |  | 1d | 2018-10-01 | 2018-10-01 | 155d |  |
| 57 | 2.42 | [RV]Bocetos del entorno |  | 1d | 2018-10-01 | 2018-10-01 | 155d |  |
| 58 | 2.43 | <Tarea nueva> | manual | 1d? | 2018-10-01 | 2018-10-01 |  |  |

| ID | WBS | Task | Type | Duration | Start | Finish | Total slack |
| --- | --- | --- | --- | --- | --- | --- | --- |
| 59 | 3 | **Hito 2** |  | 76d? | 2018-10-01 | 2019-01-14 | 52d |
| 60 | 3.1 | **Navidad** |  | 1d | 2018-12-11 | 2018-12-12 | 0d |
| 61 | 3.1.1 | <Tarea nueva> | manual | 1d? | 2018-12-11 | 2018-12-12 |  |
| 62 | 3.2 | **Iteracion 8** |  | 1d | 2019-01-14 | 2019-01-14 | 0d |
| 63 | 3.2.1 | <Tarea nueva> | manual | 1d? | 2019-01-14 | 2019-01-14 |  |
| 64 | 3.3 | [PM]Revisar especificación proyecto |  | 1d | 2018-10-01 | 2018-10-01 | 155d |
| 65 | 3.4 | [PM]Reestimar proyecto |  | 1d? | 2018-10-01 | 2018-10-01 | 155d |
| 66 | 3.5 | [PM]Detallar plan iteraciones del mes de Enero. Creación Subtareas y precedencias en Project |  | 1d? | 2018-10-01 | 2018-10-01 | 155d |
| 67 | 3.6 | [PM]Detallar plan iteraciones del mes de Enero. Asignar recursos a las tareas en Project |  | 1d? | 2018-10-01 | 2018-10-01 | 155d |
| 68 | 3.7 | [PM]Registrar tiempos y % de realización de tareas en Project |  | 1d? | 2018-10-01 | 2018-10-01 | 155d |
| 69 | 3.8 | [PM]Comparar la planificación prevista y real en Project hito 2 |  | 1d? | 2018-10-01 | 2018-10-01 | 155d |
| 70 | 3.9 | [PM]Confeccionar Informes de iteración e informe resumen de Hito 2 |  | 1d? | 2018-10-01 | 2018-10-01 | 155d |
| 71 | 3.10 | [V1]Sistema de depuración visual in-game de la IA |  | 1d | 2018-10-01 | 2018-10-01 | 155d |
| 72 | 3.11 | [V1]Sistema de distribución central de tiempo de proceso (Scheduling) |  | 1d? | 2018-10-01 | 2018-10-01 | 155d |
| 73 | 3.12 | [V2]Power-ups y elementos adicionales |  | 1d | 2018-10-01 | 2018-10-01 | 155d |
| 74 | 3.13 | [V2]Integración de librería para GUI |  | 1d | 2018-10-01 | 2018-10-01 | 155d |
| 75 | 3.14 | [V2]Implementación de menús |  | 1d | 2018-10-01 | 2018-10-01 | 155d |
| 76 | 3.15 | [V2]Implementación del HUD |  | 1d | 2018-10-01 | 2018-10-01 | 155d |
| 77 | 3.16 | [PD]Trailer juego/proyecto |  | 1d | 2018-10-01 | 2018-10-01 | 155d |
| 78 | 3.17 | [PD]Making of juego/proyecto |  | 1d | 2018-10-01 | 2018-10-01 | 155d |
| 79 | 3.18 | [RV]Modelado de los personajes |  | 1d | 2018-10-01 | 2018-10-01 | 155d |
| 80 | 3.19 | [RV]Texturizado de los personajes |  | 1d | 2018-10-01 | 2018-10-01 | 155d |
| 81 | 3.20 | [RV]Modelado del entorno y elementos |  | 1d | 2018-10-01 | 2018-10-01 | 155d |
| 82 | 3.21 | <Tarea nueva> |  | 1d? | 2018-10-01 | 2018-10-01 | 155d |

| ID | WBS | Task | Type | Duration | Start | Finish | Total slack |
| --- | --- | --- | --- | --- | --- | --- | --- |
| 83 | 4 | **Hito 3** |  | 114d? | 2018-10-01 | 2019-03-07 | 42d |
| 84 | 4.1 | **Iteracion 9** |  | 1d | 2019-01-24 | 2019-01-24 | 0d |
| 85 | 4.1.1 | <Tarea nueva> | manual | 1d? | 2019-01-24 | 2019-01-24 |  |
| 86 | 4.2 | **Iteracion 10** |  | 1d | 2019-02-07 | 2019-02-07 | 0d |
| 87 | 4.2.1 | <Tarea nueva> | manual | 1d? | 2019-02-07 | 2019-02-07 |  |
| 88 | 4.3 | **Iteracion 11** |  | 1d | 2019-02-22 | 2019-02-22 | 0d |
| 89 | 4.3.1 | <Tarea nueva> | manual | 1d? | 2019-02-22 | 2019-02-22 |  |
| 90 | 4.4 | **Iteracion 12** |  | 1d | 2019-03-07 | 2019-03-07 | 0d |
| 91 | 4.4.1 | <Tarea nueva> | manual | 1d? | 2019-03-07 | 2019-03-07 |  |
| 92 | 4.5 | [PM]Detallar plan iteraciones del mes de Febrero-Marzo. Creación Subtareas y precedencias en Project |  | 1d | 2018-10-01 | 2018-10-01 | 155d |
| 93 | 4.6 | [PM]Detallar plan iteraciones del mes de Febrero-Marzo Asignar recursos a las tareas en Project |  | 1d? | 2018-10-01 | 2018-10-01 | 155d |
| 94 | 4.7 | [PM]Registrar tiempos y % de realización de tareas en Project |  | 1d? | 2018-10-01 | 2018-10-01 | 155d |
| 95 | 4.8 | [PM]Comparar la planificación prevista y real en Project hito 3 |  | 1d? | 2018-10-01 | 2018-10-01 | 155d |
| 96 | 4.9 | [PM]Confeccionar Informes de iteración e informe resumen de Hito 3 |  | 1d? | 2018-10-01 | 2018-10-01 | 155d |
| 97 | 4.10 | [PM]Elaborar la presentación del Hito 3 |  | 1d? | 2018-10-01 | 2018-10-01 | 155d |
| 98 | 4.11 | [PM]Exponer la presentación del Hito 3 |  | 1d? | 2018-10-01 | 2018-10-01 | 155d |
| 99 | 4.12 | [TAG]Estructura básica del nodo (array de hijos, puntero a padre, puntero a entidad, funcionalidad básica -constructor, destructor, gets, sets, manejo de hijos….) |  | 1d? | 2018-10-01 | 2018-10-01 | 155d |
| 100 | 4.13 | [TAG]Recorrido-dibujado del árbol |  | 1d? | 2018-10-01 | 2018-10-01 | 155d |
| 101 | 4.14 | [TAG]Estructura básica de la entidad (Constructor, destructor, funciones… todas virtuales, vacías) |  | 1d | 2018-10-01 | 2018-10-01 | 155d |
| 102 | 4.15 | [TAG]Matrices (model, view, projection) y pila estáticas y su manejo |  | 1d? | 2018-10-01 | 2018-10-01 | 155d |
| 103 | 4.16 | [TAG]Estructura básica de la transformación (Constructor, destructor, matriz transformación…) |  | 1d? | 2018-10-01 | 2018-10-01 | 155d |
| 104 | 4.17 | [TAG]Operaciones de transformación (trasladar, rotar, escalar, identidad, trasponer, invertir, todas con GLM o GLMatrix) |  | 1d? | 2018-10-01 | 2018-10-01 | 155d |
| 105 | 4.18 | [TAG]Dibujado (begindraw, enddraw, manejo pila y matriz model) |  | 1d? | 2018-10-01 | 2018-10-01 | 155d |
| 106 | 4.19 | [TAG]Estructura básica de la cámara (Constructor, destructor, matriz proyección) |  | 1d? | 2018-10-01 | 2018-10-01 | 155d |
| 107 | 4.20 | [TAG]Rellenar matriz perspectiva (con GLM o GLMatrix) |  | 1d | 2018-10-01 | 2018-10-01 | 155d |
| 108 | 4.21 | [TAG]Estructura básica de la luz (Constructor, destructor) |  | 1d? | 2018-10-01 | 2018-10-01 | 155d |
| 109 | 4.22 | [TAG]Datos y funciones luz puntual |  | 1d? | 2018-10-01 | 2018-10-01 | 155d |
| 110 | 4.23 | [TAG]Estructura básica de la malla (Constructor, destructor) |  | 1d? | 2018-10-01 | 2018-10-01 | 155d |
| 111 | 4.24 | [TAG]Datos de mallas, texturas, materiales… (llamadas al gestor de recursos) |  | 1d? | 2018-10-01 | 2018-10-01 | 155d |
| 112 | 4.25 | [TAG]Dibujado de mallas (begindraw, enddraw, matriz model…) |  | 1d? | 2018-10-01 | 2018-10-01 | 155d |
| 113 | 4.26 | [TAG]Estructura básica del gestor de recursos (constructor, destructor, vectores de recursos) |  | 1d? | 2018-10-01 | 2018-10-01 | 155d |
| 114 | 4.27 | [TAG]Obtener recurso (gestión adecuada de memoria) |  | 1d? | 2018-10-01 | 2018-10-01 | 155d |
| 115 | 4.28 | [TAG]Estructura básica del recurso (constructor, destructor. Es virtual, vacío) |  | 1d? | 2018-10-01 | 2018-10-01 | 155d |
| 116 | 4.29 | [TAG]Estructura básica de la malla (constructor, destructor) |  | 1d? | 2018-10-01 | 2018-10-01 | 155d |
| 117 | 4.30 | [TAG]Lectura de disco (con assimp) |  | 1d? | 2018-10-01 | 2018-10-01 | 155d |
| 118 | 4.31 | [TAG]Creación de buffers de vértices, normales, índices… y relleno |  | 1d? | 2018-10-01 | 2018-10-01 | 155d |
| 119 | 4.32 | [TAG]Dibujado de las mallas (draw, con paso de los buffers a OpenGL o WebGL) |  | 1d? | 2018-10-01 | 2018-10-01 | 155d |
| 120 | 4.33 | [TAG]Estructura básica del material (constructor, destructor) |  | 1d? | 2018-10-01 | 2018-10-01 | 155d |
| 121 | 4.34 | [TAG]Leer material de disco (con librería o con parser propio) y rellenar valores |  | 1d? | 2018-10-01 | 2018-10-01 | 155d |
| 122 | 4.35 | [TAG]Dibujado de los materiales (preparar los materiales y cargarlos en OpenGL o WebGL) |  | 1d? | 2018-10-01 | 2018-10-01 | 155d |
| 123 | 4.36 | [TAG]Estructura básica del shader (constructor, destructor) |  | 1d? | 2018-10-01 | 2018-10-01 | 155d |
| 124 | 4.37 | [TAG]Lectura de shaders de disco (con parser propio) y guardarlo |  | 1d? | 2018-10-01 | 2018-10-01 | 155d |
| 125 | 4.38 | [TAG]Estructura básica de la interfaz (constructor, destructor, inicialización motor y openGL) |  | 1d? | 2018-10-01 | 2018-10-01 | 155d |
| 126 | 4.39 | [TAG]Funciones para crear cámaras y gestionarlas (manejo de las cámaras, registro, cálculo de la matriz view) |  | 1d? | 2018-10-01 | 2018-10-01 | 155d |
| 127 | 4.40 | [TAG]Funciones para crear luces y gestionarlas (manejo de las luces registro, cálculo de la matriz light) |  | 1d? | 2018-10-01 | 2018-10-01 | 155d |
| 128 | 4.41 | [TAG]Funciones para crear transformaciones (creación de varios nodos con las transformaciones, manejo de las transformaciones) |  | 1d? | 2018-10-01 | 2018-10-01 | 155d |
| 129 | 4.42 | [TAG]Funciones para crear mallas y animaciones |  | 1d? | 2018-10-01 | 2018-10-01 | 155d |
| 130 | 4.43 | [TAG]Funciones para crear shaders y gestionarlos |  | 1d? | 2018-10-01 | 2018-10-01 | 155d |
| 131 | 4.44 | [TAG]Shader básico (Sombreado de Phong, reflexión de Phong) con materiales |  | 1d? | 2018-10-01 | 2018-10-01 | 155d |
| 132 | 4.45 | [TAG]Integración con la aplicación |  | 1d? | 2018-10-01 | 2018-10-01 | 155d |
| 133 | 4.46 | [TAG]Realización de una fachada entre el motor y la aplicación o videojuego |  | 1d? | 2018-10-01 | 2018-10-01 | 155d |
| 134 | 4.47 | [TAG]Librería matemática (GLM o GLMatrix) |  | 1d? | 2018-10-01 | 2018-10-01 | 155d |
| 135 | 4.48 | [TAG][Solo CED] Librería de lectura de mallas (assimp…) |  | 1d? | 2018-10-01 | 2018-10-01 | 155d |
| 136 | 4.49 | [TAG][Solo CED] Librería de ventanas, entrada/salida... (GLFW…) |  | 1d? | 2018-10-01 | 2018-10-01 | 155d |
| 137 | 4.50 | [V1]Flocking: comportamiento grupal emergente |  | 1d | 2018-10-01 | 2018-10-01 | 155d |
| 138 | 4.51 | [V1]Editor in-game de parámetros y comportamientos de la IA |  | 1d | 2018-10-01 | 2018-10-01 | 155d |
| 139 | 4.52 | [V1]Sistema de logros y puntuaciones web |  | 1d | 2018-10-01 | 2018-10-01 | 155d |
| 140 | 4.53 | [V2]Implementación de cesped y vegetación |  | 1d | 2018-10-01 | 2018-10-01 | 155d |
| 141 | 4.54 | [V2]Implementación de nubes |  | 1d | 2018-10-01 | 2018-10-01 | 155d |
| 142 | 4.55 | [V2]Implementación de sistemas de partículas |  | 1d | 2018-10-01 | 2018-10-01 | 155d |
| 143 | 4.56 | [TDS]Resto de la biblioteca (máx. 1/3), cuesheet y metadatos finales |  | 1d | 2018-10-01 | 2018-10-01 | 155d |
| 144 | 4.57 | <Tarea nueva> |  | 1d? | 2018-10-01 | 2018-10-01 | 155d |

| ID | WBS | Task | Type | Duration | Start | Finish | Total slack |
| --- | --- | --- | --- | --- | --- | --- | --- |
| 145 | 5 | **hito 4** |  | 156d? | 2018-10-01 | 2019-05-06 | 0d |
| 146 | 5.1 | **Iteracion 13** |  | 1d | 2019-03-28 | 2019-03-28 | 0d |
| 147 | 5.1.1 | <Tarea nueva> | manual | 1d? | 2019-03-28 | 2019-03-28 |  |
| 148 | 5.2 | **Semana santa** |  | 1d | 2019-04-18 | 2019-04-18 | 0d |
| 149 | 5.2.1 | <Tarea nueva> | manual | 1d? | 2019-04-18 | 2019-04-18 |  |
| 150 | 5.3 | **Iteracion 14** |  | 1d | 2019-05-06 | 2019-05-06 | 0d |
| 151 | 5.3.1 | <Tarea nueva> | manual | 1d? | 2019-05-06 | 2019-05-06 |  |
| 152 | 5.4 | [PM]Detallar plan iteraciones del mes de Abril-Mayo. Creación Subtareas y precedencias en Project |  | 1d | 2018-10-01 | 2018-10-01 | 155d |
| 153 | 5.5 | [PM]Detallar plan iteraciones del mes de Abril-Mayo. Asignar recursos a las tareas en Project |  | 1d? | 2018-10-01 | 2018-10-01 | 155d |
| 154 | 5.6 | [PM]Registrar tiempos y % de realización de tareas en Project |  | 1d? | 2018-10-01 | 2018-10-01 | 155d |
| 155 | 5.7 | [PM]Comparar la planificación prevista y real en Project hito 4 |  | 1d? | 2018-10-01 | 2018-10-01 | 155d |
| 156 | 5.8 | [PM]Confeccionar Informes de iteración e informe resumen de Hito 4 |  | 1d? | 2018-10-01 | 2018-10-01 | 155d |
| 157 | 5.9 | [PM]Elaborar la presentación del Hito 4 |  | 1d? | 2018-10-01 | 2018-10-01 | 155d |
| 158 | 5.10 | [PM]Exponer la presentación del Hito 4 |  | 1d? | 2018-10-01 | 2018-10-01 | 155d |
| 159 | 5.11 | [TAG]Estructura básica de la animación (Constructor, destructor) |  | 1d | 2018-10-01 | 2018-10-01 | 155d |
| 160 | 5.12 | [TAG]Datos de animaciones, mallas, texturas, materiales (multiples, con llamadas al gestor de recursos) |  | 1d? | 2018-10-01 | 2018-10-01 | 155d |
| 161 | 5.13 | [TAG]Dibujado de texturas (preparar las texturas y cargarlas en OpenGL o WebGL) |  | 1d? | 2018-10-01 | 2018-10-01 | 155d |
| 162 | 5.14 | [TAG]Shader básico (Sombreado de Phong, reflexión de Phong) con materiales y texturas |  | 1d? | 2018-10-01 | 2018-10-01 | 155d |
| 163 | 5.15 | [TAG]Shader Cartoon |  | 1d? | 2018-10-01 | 2018-10-01 | 155d |
| 164 | 5.16 | [TAG]Bounding boxes (incluye retocar nodos, entidades y recursos malla) |  | 1d? | 2018-10-01 | 2018-10-01 | 155d |
| 165 | 5.17 | [TAG]Backface culling |  | 1d? | 2018-10-01 | 2018-10-01 | 155d |
| 166 | 5.18 | [TAG]Frustum culling |  | 1d? | 2018-10-01 | 2018-10-01 | 155d |
| 167 | 5.19 | [TAG]Sombras proyectadas |  | 1d? | 2018-10-01 | 2018-10-01 | 155d |
| 168 | 5.20 | [TAG]Sistema de partículas (sólo la incorporación en el motor) |  | 1d? | 2018-10-01 | 2018-10-01 | 155d |
| 169 | 5.21 | [PD]Créditos |  | 1d | 2018-10-01 | 2018-10-01 | 155d |
| 170 | 5.22 | [PD]Vídeo final juego / explicación parte del proyecto |  | 1d | 2018-10-01 | 2018-10-01 | 155d |
| 171 | 5.23 | [TDS]Integración de sonido y música en el juego |  | 1d | 2018-10-01 | 2018-10-01 | 155d |
| 172 | 5.24 | [TDS]Post producción (mezcla y masterización in-game) |  | 1d | 2018-10-01 | 2018-10-01 | 155d |
| 173 | 5.25 | [TDS]Sonido generado proceduralmente in-game |  | 1d | 2018-10-01 | 2018-10-01 | 155d |
| 174 | 5.26 | [RV]Rigging de los personajes |  | 1d | 2018-10-01 | 2018-10-01 | 155d |
| 175 | 5.27 | [RV]Captura de movimiento |  | 1d | 2018-10-01 | 2018-10-01 | 155d |
| 176 | 5.28 | [RV]Animación de los personajes |  | 1d | 2018-10-01 | 2018-10-01 | 155d |
| 177 | 5.29 | [RV]Texturizado del entorno y elementos |  | 1d | 2018-10-01 | 2018-10-01 | 155d |
